# Лабораторная 4 УБ Фомичев проект

Schedule from MS Project, 2023-09-01 to 2025-08-25, status date 2023-10-01, costs in ₽, A marks actual dates.

## Calendars

- Проект «Разработка и внедрение ИСУП»: Mon-Fri 09:00-13:00, 14:00-18:00; Sat-Sun off.

## Resources

| Resource | Group | Rate |
| --- | --- | --- |
| Данилов А.В. | Руководитель проекта | 680 |
| Иванова Р.С. | Аналитик | 340 |
| Ломанов П.А. | Методолог | 300 |
| Петров А.А. | Архитектор ПО | 450 |
| Калиничев Д.И. | Разработчик ПО | 300 |
| Рысаков А.Р. | Разработчик ПО | 300 |
| Кузьмин Г.В. | Разработчик ПО | 300 |
| Золотарёв В.А. | Разработчик ПО | 300 |
| Исакова П.Д. | Технический писатель | 300 |
| Жорин У.Д. | Технический писатель | 300 |
| Тестировщик |  | 380 |
| Командировочные |  |  |
| Демин И.В. | Технолог по разработке ПО | 340 |
| Зуев Р.М | Технолог по разработке ПО | 340 |

## Schedule

| ID | WBS | Task | Type | Duration | Start | Finish | Predecessors | Complete | Remaining | Baseline start | Baseline finish | Baseline duration | Total slack | Constraint | Resources | Work | Actual work | Cost | Baseline cost | Actual cost |
| --- | --- | --- | --- | --- | --- | --- | --- | --- | --- | --- | --- | --- | --- | --- | --- | --- | --- | --- | --- | --- |
| 1 | 1 | Подписание договора на разработку ИСУП | milestone | 0d | 2023-09-01 A | 2023-09-01 A |  | 100% |  | 2022-09-01 | 2022-09-01 |  |  |  |  |  |  |  |  |  |
| 2 | 2 | **Подготовительные работы** |  | 10d | 2023-09-01 A | 2023-09-15 A | 1 | 100% |  | 2022-09-01 | 2022-09-14 | 10d |  |  |  | 160h | 160h | 80,000 | 80,000 | 80,000 |
| 3 | 2.1 | Определение целей и назначения системы |  | 5d | 2023-09-01 A | 2023-09-07 A |  | 100% |  | 2022-09-01 | 2022-09-07 | 5d |  |  | Данилов А.В.; Иванова Р.С. | 80h | 80h | 40,800 | 40,800 | 40,800 |
| 4 | 2.2 | Определение участников проекта |  | 5d | 2023-09-08 A | 2023-09-14 A | 3 | 100% |  | 2022-09-08 | 2022-09-14 | 5d |  |  | Данилов А.В. | 40h | 40h | 27,200 | 27,200 | 27,200 |
| 5 | 2.3 | Разработка устава проекта |  | 5d | 2023-09-08 A | 2023-09-14 A | 3 | 100% |  | 2022-09-08 | 2022-09-14 | 5d |  | start no earlier than 2023-09-08 | Ломанов П.А. | 40h | 40h | 12,000 | 12,000 | 12,000 |
| 6 | 2.4 | Окончание подготовительных работ | milestone | 0d | 2023-09-15 A | 2023-09-15 A | 5 | 100% |  | 2022-09-14 | 2022-09-14 |  |  | start no earlier than 2023-09-15 |  |  |  |  |  |  |
| 7 | 3 | **Обследование бизнес-процессов, формирование ТЗ** |  | 25d | 2023-09-15 A | 2023-10-19 | 2 | 99% | 0d | 2022-09-15 | 2022-10-12 | 20d | 0d |  |  | 200h | 200h | 68,200 | 56,200 | 68,200 |
| 8 | 3.1 | Обследование бизнес-процессов |  | 5d | 2023-09-15 A | 2023-09-21 A |  | 100% |  | 2022-09-15 | 2022-09-21 | 5d |  |  | Иванова Р.С.; Командировочные [0.1%] | 40h | 40h | 18,600 | 18,600 | 18,600 |
| 9 | 3.2 | Постановка задачи |  | 5d | 2023-09-22 A | 2023-09-28 A | 8 | 100% |  | 2022-09-22 | 2022-09-28 | 5d |  |  | Иванова Р.С. | 40h | 40h | 13,600 | 13,600 | 13,600 |
| 10 | 3.3 | Формирование ТЗ на разработку ИСУП |  | 15d | 2023-09-29 A | 2023-10-19 A | 9 | 100% |  | 2022-09-29 | 2022-10-12 | 10d |  | finish no earlier than 2023-10-19 | Жорин У.Д. | 120h | 120h | 36,000 | 24,000 | 36,000 |
| 11 | 3.4 | Согласование ТЗ на разработку ИСУП | milestone | 0d | 2023-10-19 | 2023-10-19 | 10 |  |  | 2022-10-12 | 2022-10-12 |  | 0d |  |  |  |  |  |  |  |
| 12 | 4 | **Разработка и адаптация системы** |  | 368d | 2023-10-20 A | 2025-03-18 | 7 | 5% | 348.97d | 2022-10-13 | 2024-04-09 | 388d | 0d |  |  | 5656h | 170h | 1,734,000 | 1,716,000 | 69,000 |
| 13 | 4.1 | Определение подсистем ИСУП |  | 15d | 2023-10-20 A | 2023-11-09 A |  | 100% |  | 2022-10-13 | 2022-10-26 | 10d |  |  | Петров А.А. | 120h | 120h | 54,000 | 36,000 | 54,000 |
| 14 | 4.2 | **Проектирвоание и адаптация подсистем ИСУП** |  | 316d | 2023-11-10 A | 2025-01-24 | 13 | 2% | 310.6d | 2022-10-27 | 2024-02-16 | 341d | 0d |  |  | 5296h | 50h | 1,588,800 | 1,588,800 | 15,000 |
| 15 | 4.2.1 | Проектирование подсистемы проектного бюджетирования |  | 25d | 2023-11-16 A | 2023-12-20 |  | 25% | 18.75d | 2023-12-18 | 2024-01-19 | 25d | 267d | start no earlier than 2023-11-16 | Калиничев Д.И. | 200h | 50h | 60,000 | 60,000 | 15,000 |
| 16 | 4.2.2 | Проектирование подсистемы учета трудозатрат по проектам |  | 296d | 2023-11-10 | 2024-12-27 |  |  |  | 2022-10-27 | 2023-12-15 | 296d | 0d |  | Калиничев Д.И.; Рысаков А.Р. | 4736h |  | 1,420,800 | 1,420,800 |  |
| 17 | 4.2.3 | Проектирование подсистемы календарно-сетевого планирования |  | 25d | 2023-11-10 | 2023-12-14 |  |  |  | 2022-10-27 | 2022-12-01 | 25d | 271d |  | Кузьмин Г.В. | 200h |  | 60,000 | 60,000 |  |
| 18 | 4.2.4 | Адаптация подсистем ИСУП |  | 20d | 2024-12-30 | 2025-01-24 | 15, 16, 17 |  |  | 2024-01-22 | 2024-02-16 | 20d | 0d |  | Золотарёв В.А. | 160h |  | 48,000 | 48,000 |  |
| 19 | 4.3 | Тестирование ИСУП |  | 30d | 2025-01-27 | 2025-03-18 | 14 |  |  | 2024-02-19 | 2024-04-09 | 30d | 0d |  | Тестировщик | 240h |  | 91,200 | 91,200 |  |
| 20 | 4.4 | Тестирование ИСУП завершено | milestone | 0d | 2025-03-18 | 2025-03-18 | 19 |  |  | 2024-04-09 | 2024-04-09 |  | 0d |  |  |  |  |  |  |  |
| 21 | 5 | **Внедрение ИСУП** |  | 114d | 2025-03-19 | 2025-08-25 | 12 |  |  | 2024-04-10 | 2024-09-16 | 114d | 0d |  |  | 912h |  | 326,240 | 326,240 |  |
| 22 | 5.1 | **Подготовка инфраструктуры** |  | 12d | 2025-03-19 | 2025-04-03 |  |  |  | 2024-04-10 | 2024-04-25 | 12d | 0d |  |  | 96h |  | 43,200 | 43,200 |  |
| 23 | 5.1.1 | Подготовка инфраструктуры для развёртывания ИСУП |  | 12d | 2025-03-19 | 2025-04-03 |  |  |  | 2024-04-10 | 2024-04-25 | 12d | 0d |  | Петров А.А. | 96h |  | 43,200 | 43,200 |  |
| 24 | 5.2 | **Опытная эксплуатация** |  | 81d | 2025-04-04 | 2025-07-25 | 22 |  |  | 2024-04-26 | 2024-08-16 | 81d | 0d |  |  | 648h |  | 232,640 | 232,640 |  |
| 25 | 5.2.1 | Разработка сопроводительной документации для опытной эксплуатации |  | 7d | 2025-04-04 | 2025-04-14 |  |  |  | 2024-04-26 | 2024-05-06 | 7d | 0d |  | Иванова Р.С. | 56h |  | 19,040 | 19,040 |  |
| 26 | 5.2.2 | Опытная эксплуатация |  | 30d | 2025-04-15 | 2025-05-26 | 25 |  |  | 2024-05-07 | 2024-06-17 | 30d | 0d |  | Ломанов П.А. | 240h |  | 72,000 | 72,000 |  |
| 27 | 5.2.3 | Оценка соответствия системы ТЗ |  | 30d | 2025-05-27 | 2025-07-07 | 26 |  |  | 2024-06-18 | 2024-07-29 | 30d | 0d |  | Петров А.А. | 240h |  | 108,000 | 108,000 |  |
| 28 | 5.2.4 | Устранение замечаний в работе ИСУП |  | 14d | 2025-07-08 | 2025-07-25 | 27 |  |  | 2024-07-30 | 2024-08-16 | 14d | 0d |  | Рысаков А.Р. | 112h |  | 33,600 | 33,600 |  |
| 29 | 5.2.5 | Окончание опытной эксплуатации (веха) | milestone | 0d | 2025-07-25 | 2025-07-25 | 28 |  |  | 2024-08-16 | 2024-08-16 |  | 0d |  |  |  |  |  |  |  |

| ID | WBS | Task | Type | Duration | Start | Finish | Predecessors | Baseline start | Baseline finish | Baseline duration | Total slack | Resources | Work | Cost | Baseline cost |
| --- | --- | --- | --- | --- | --- | --- | --- | --- | --- | --- | --- | --- | --- | --- | --- |
| 30 | 5.3 | **Передача в промышленную эксплуатацию** |  | 21d | 2025-07-25 | 2025-08-25 | 24 | 2024-08-16 | 2024-09-16 | 21d | 0d |  | 168h | 50,400 | 50,400 |
| 31 | 5.3.1 | Распоряжение о передаче ИСУП в промышленную эксплуатацию (веха) | milestone | 0d | 2025-07-25 | 2025-07-25 |  | 2024-08-16 | 2024-08-16 |  | 0d |  |  |  |  |
| 32 | 5.3.2 | Подготовка эксплуатационной документации |  | 21d | 2025-07-28 | 2025-08-25 | 31 | 2024-08-19 | 2024-09-16 | 21d | 0d | Исакова П.Д. | 168h | 50,400 | 50,400 |
| 33 | 5.3.3 | Передача ИСУП в промышленную эксплуатацию (веха) | milestone | 0d | 2025-08-25 | 2025-08-25 | 32 | 2024-09-16 | 2024-09-16 |  | 0d |  |  |  |  |
